# caMOD FY005 03042005

Schedule from MS Project, 2004-12-09 to 2006-02-09, A marks actual dates.
NCI/NIH

## Calendars

- Standard: Mon-Fri 08:00-12:00, 13:00-17:00; Sat-Sun off.

## Resources

| Resource |
| --- |
| CCMG |
| Sharon |
| Johnita |
| Marguerite |
| NCICB |
| QA |
| Ulli |
| Fei |
| Alex |
| Richard |
| TBD |
| Marc P. |
| CCMG Members |
| Nick |
| Srini |
| Team |
| TBD1 |
| Marc P |

## Schedule

| ID | WBS | Task | Duration | Start | Finish | Predecessors | Complete | Remaining | Total slack | Free slack | Constraint | Resources | Work | Actual work |
| --- | --- | --- | --- | --- | --- | --- | --- | --- | --- | --- | --- | --- | --- | --- |
| 1 | 1 | **MMHCC FY005** | 306d | 2004-12-09 A | 2006-02-09 |  | 29% | 216.12d | 0d |  |  |  | 6521.47h | 1157.96h |
| 2 | 1.1 | **Inception** | 23d | 2004-12-09 A | 2005-01-10 |  | 99% | 0.19d | 283d |  |  |  | 364h | 362h |
| 3 | 1.1.1 | Identify Project Requirements | 1.5w | 2004-12-09 A | 2004-12-20 A |  | 100% |  |  |  |  | CCMG | 60h | 60h |
| 4 | 1.1.2 | Determine Level of Effort/Requirement | 2w | 2004-12-09 A | 2004-12-22 A |  | 100% |  |  |  |  | Sharon; Johnita | 160h | 160h |
| 5 | 1.1.3 | Prioritize Project Requirements | 3d | 2004-12-23 A | 2004-12-27 A | 4 | 100% |  |  |  |  | CCMG | 24h | 24h |
| 6 | 1.1.4 | Determine Project Scope | 1w | 2004-12-28 A | 2005-01-03 A | 5 | 100% |  |  |  |  | Sharon; Marguerite | 80h | 80h |
| 7 | 1.1.5 | Update Project Plan | 1w | 2005-01-04 A | 2005-01-10 | 6 | 95% | 0.05w | 283d |  |  | Sharon | 40h | 38h |
| 8 | 1.2 | **caMOD Defect Fixes** | 87d | 2005-01-05 A | 2005-05-05 |  | 95% | 4.48d | 25.03d | 0d |  |  | 408h | 368h |
| 9 | 1.2.1 | Yeast Data | 16.4w | 2005-01-05 A | 2005-04-28 A |  | 100% |  |  |  | finish no earlier than 2005-02-21 | Johnita [50%] | 328h | 328h |
| 10 | 1.2.2 | Xenograft/Alograft Data | 2w | 2005-01-05 A | 2005-04-28 A |  | 100% |  |  |  | finish no earlier than 2005-02-21 | Johnita [50%] | 40h | 40h |
| 11 | 1.2.3 | Test / Deploy yeast & xenograft fixes | 5d | 2005-04-29 | 2005-05-05 | 10 |  |  | 25.03d | 10d | start no earlier than 2005-04-25 | Johnita [50%]; Srini [25%]; Ulli [25%] | 40h |  |
| 12 | 1.3 | **CCB Meetings** | 236d | 2005-02-22 A | 2006-01-17 |  | 8% | 216.33d | 17d |  |  |  |  |  |
| 13 | 1.3.1 | February Meeting | 1d | 2005-02-22 A | 2005-02-22 A |  | 100% |  |  |  | start no earlier than 2005-02-22 |  |  |  |
| 14 | 1.3.2 | March Meeting | 1d | 2005-03-15 | 2005-03-15 |  |  |  | 237d |  | start no earlier than 2005-03-15 |  |  |  |
| 15 | 1.3.3 | April Meeting | 1d | 2005-04-19 | 2005-04-19 |  |  |  | 212d |  | start no earlier than 2005-04-19 |  |  |  |
| 16 | 1.3.4 | May Meeting | 1d | 2005-05-10 | 2005-05-10 |  |  |  | 197d |  | start no earlier than 2005-05-10 |  |  |  |
| 17 | 1.3.5 | June Meeting | 1d | 2005-06-21 | 2005-06-21 |  |  |  | 167d |  | start no earlier than 2005-06-21 |  |  |  |
| 18 | 1.3.6 | July Meeting | 1d | 2005-07-19 | 2005-07-19 |  |  |  | 147d |  | start no earlier than 2005-07-19 |  |  |  |
| 19 | 1.3.7 | August Meeting | 1d | 2005-08-16 | 2005-08-16 |  |  |  | 127d |  | start no earlier than 2005-08-16 |  |  |  |
| 20 | 1.3.8 | September Meeting | 1d | 2005-09-20 | 2005-09-20 |  |  |  | 102d |  | start no earlier than 2005-09-20 |  |  |  |
| 21 | 1.3.9 | October Meeting | 1d | 2005-10-18 | 2005-10-18 |  |  |  | 82d |  | start no earlier than 2005-10-18 |  |  |  |
| 22 | 1.3.10 | November Meeting | 1d | 2005-11-15 | 2005-11-15 |  |  |  | 62d |  | start no earlier than 2005-11-15 |  |  |  |
| 23 | 1.3.11 | December Meeting | 1d | 2005-12-20 | 2005-12-20 |  |  |  | 37d |  | start no earlier than 2005-12-20 |  |  |  |
| 24 | 1.3.12 | January, 2006 Meeting | 1d | 2006-01-17 | 2006-01-17 |  |  |  | 17d |  | start no earlier than 2006-01-17 |  |  |  |

| ID | WBS | Task | Type | Duration | Start | Finish | Predecessors | Complete | Remaining | Total slack | Free slack | Constraint | Resources | Work | Actual work |
| --- | --- | --- | --- | --- | --- | --- | --- | --- | --- | --- | --- | --- | --- | --- | --- |
| 25 | 1.4 | **caMOD Enhancements (2-Tier)** |  | 16d | 2005-05-05 A | 2005-05-26 |  | 28% | 11.5d | 185d |  |  |  | 102.4h | 36h |
| 26 | 1.4.1 | Fix urgent / high priority defects in Test Track |  | 1w | 2005-05-05 A | 2005-05-11 |  | 90% | 0.1w | 185d | 0d | start no earlier than 2005-05-05 | Nick [60%] | 38.4h | 36h |
| 27 | 1.4.2 | Test all changes implemented in this interation |  | 6d | 2005-05-12 | 2005-05-19 | 26 |  |  | 185d | 0d |  | Ulli [50%] | 24h |  |
| 28 | 1.4.3 | Deploy Iteration to Production |  | 5d | 2005-05-20 | 2005-05-26 | 27, 11 |  |  | 185d |  |  | QA | 40h |  |
| 29 | 1.5 | **caMOD Version 2 caBIG Silver Compliance (N-Tier)** |  | 204d | 2005-01-26 A | 2005-11-07 | 8 | 14% | 174.97d | 68d |  |  |  | 4795.07h | 391.96h |
| 30 | 1.5.1 | **Inception** |  | 5d | 2005-01-26 A | 2005-02-01 A |  | 100% |  |  |  |  |  | 80h | 80h |
| 31 | 1.5.1.1 | Identify caMOD caBIG Silver (N-Tier) Requirements |  | 1w | 2005-01-26 A | 2005-02-01 A |  | 100% |  |  |  |  | CCMG; NCICB | 80h | 80h |
| 32 | 1.5.2 | **Elaboration** |  | 105d | 2005-02-09 A | 2005-07-05 | 30 | 30% | 73.28d | 157d |  |  |  | 1221.47h | 311.96h |
| 33 | 1.5.2.1 | Draft caMOD caBIG Silver (N-Tier) Use Cases |  | 4w | 2005-02-09 A | 2005-05-20 |  | 80% | 0.8w | 14.5d | 0d |  | Johnita [50%]; Srini [50%] | 120.67h | 90h |
| 34 | 1.5.2.2 | Review Use Cases, including CCMG members |  | 1d | 2005-02-28 A | 2005-05-26 | 33FS+3d | 30% | 0.7d | 165.8d | 0d |  | CCMG Members | 8h | 2.4h |
| 35 | 1.5.2.3 | Draft caMOD caBIG Silver (N-Tier) Test Cases |  | 4w | 2005-05-26 | 2005-06-23 | 34 |  |  | 165.8d |  |  | QA [50%]; Ulli [50%]; Nick [50%] | 240h |  |
| 36 | 1.5.2.4 | Use of Common Security Manager |  | 3w | 2005-05-20 | 2005-06-10 | 33 |  |  | 14.5d | 0d |  | Johnita [50%]; Ulli [15%] | 78h |  |
| 37 | 1.5.2.5 | **Architecture** |  | 21d | 2005-05-11 A | 2005-06-08 | 33 | 52% | 10.06d | 176d |  |  |  | 112h | 43.2h |
| 38 | 1.5.2.5.1 | Initial Draft of Architecture |  | 2w | 2005-05-11 A | 2005-05-24 |  | 90% | 0.2w | 30d | 0d |  | Johnita [50%] | 40h | 36h |
| 39 | 1.5.2.5.2 | Internal review with MMHCC Team |  | 1d | 2005-05-25 A | 2005-05-25 | 38 | 90% | 0.1d | 178d | 0d |  | Team | 8h | 7.2h |
| 40 | 1.5.2.5.3 | Incorporate Comments/Feedback from the team review |  | 2d | 2005-05-26 | 2005-05-27 | 39 |  |  | 178d | 2d |  | TBD1 | 16h |  |
| 41 | 1.5.2.5.4 | Review architecture with the "Review Board" |  | 1d | 2005-06-01 | 2005-06-01 | 40 |  |  | 176d | 0d | start no earlier than 2005-06-01 | Team | 8h |  |
| 42 | 1.5.2.5.5 | Draft design document (caBIG template) |  | 1w | 2005-06-02 | 2005-06-08 | 41 |  |  | 176d | 0d |  | TBD1 | 40h |  |
| 43 | 1.5.2.5.6 | Milestone: Completed Design document | milestone | 0d | 2005-06-08 | 2005-06-08 | 42 |  |  | 176d |  |  | TBD1 |  |  |
| 44 | 1.5.2.6 | **User Interface Design** |  | 31.5d | 2005-05-02 A | 2005-06-14 |  | 29% | 22.36d | 172.5d |  |  |  | 180h | 67.4h |
| 45 | 1.5.2.6.1 | Draft User Interface Components |  | 1w | 2005-05-02 A | 2005-05-24 | 33 | 90% | 0.1w | 86.5d | 0d | finish no earlier than 2005-05-09 | Srini; Nick | 60h | 57h |
| 46 | 1.5.2.6.2 | Internal Review of Draft UI components |  | 1d | 2005-05-24 A | 2005-05-25 | 45 | 70% | 0.3d | 173.1d | 0d |  | Team | 8h | 5.6h |
| 47 | 1.5.2.6.3 | Incorporate comments/Feedback |  | 3d | 2005-05-25 A | 2005-05-30 | 46 | 20% | 2.4d | 172.5d | 0d |  | Nick | 24h | 4.8h |
| 48 | 1.5.2.6.4 | Incorporate icons, banners from Graphics Artist |  | 1d | 2005-05-30 | 2005-05-31 | 47 |  |  | 172.5d | 0d |  | Nick | 8h |  |
| 49 | 1.5.2.6.5 | Review Draft User Interface, including CCMG members |  | 5d | 2005-05-31 | 2005-06-07 | 48 |  |  | 172.5d | 0d |  | CCMG Members | 40h |  |
| 50 | 1.5.2.6.6 | Incorporate comments/feedback from CCMG |  | 2d | 2005-06-07 | 2005-06-09 | 49 |  |  | 172.5d | 0d |  | Nick | 16h |  |
| 51 | 1.5.2.6.7 | Incorporate template in MVC framework |  | 3d | 2005-06-09 | 2005-06-14 | 50 |  |  | 172.5d |  |  | Nick | 24h |  |
| 52 | 1.5.2.6.8 | Milestone: Completed wireframes | milestone | 0d | 2005-06-07 | 2005-06-07 | 49 |  |  | 177.5d |  |  |  |  |  |

| ID | WBS | Task | Duration | Start | Finish | Predecessors | Complete | Remaining | Total slack | Free slack | Constraint | Resources | Work | Actual work |
| --- | --- | --- | --- | --- | --- | --- | --- | --- | --- | --- | --- | --- | --- | --- |
| 53 | 1.5.2.7 | **Persistence API Development** | 94d | 2005-02-22 A | 2005-07-01 |  | 6% | 88.63d | 0d |  |  |  | 124.8h | 8.96h |
| 54 | 1.5.2.7.1 | Determine use of automatic code generator | 8d | 2005-02-22 A | 2005-05-16 |  | 20% | 6.4d | 34.6d |  |  | Marc P. [50%]; Johnita [20%] | 44.8h | 8.96h |
| 55 | 1.5.2.7.2 | Establish baseline search capability | 2w | 2005-06-06 | 2005-06-17 |  |  |  | 0d |  | start no earlier than 2005-06-06 |  |  |  |
| 56 | 1.5.2.7.3 | Establish baseline delete capability | 1w | 2005-06-20 | 2005-06-24 | 55 |  |  | 0d |  |  | Marc P | 40h |  |
| 57 | 1.5.2.7.4 | Establish baseline insert capability | 1w | 2005-06-27 | 2005-07-01 | 56 |  |  | 0d |  |  | Marc P | 40h |  |
| 58 | 1.5.2.8 | Draft Updated Object Model | 2w | 2005-05-25 A | 2005-06-10 | 38 | 85% | 0.3w | 157d | 0d |  | Marc P. [50%]; TBD [25%] | 58h | 49h |
| 59 | 1.5.2.9 | Draft Updated Data Model | 2w | 2005-05-25 A | 2005-06-07 | 38 | 85% | 0.3w | 177d |  |  | Marc P. [50%]; TBD [25%] | 60h | 51h |
| 60 | 1.5.2.10 | **Interface with caDSR** | 24.5d | 2005-06-01 | 2005-07-05 |  |  |  | 157d |  |  |  | 240h |  |
| 61 | 1.5.2.10.1 | Annotate UML model with well formed names and definitions | 3d | 2005-06-01 | 2005-06-06 | 58FS-7d |  |  | 157d | 0d |  | Ulli | 24h |  |
| 62 | 1.5.2.10.2 | Review semantic connector output | 0.5d | 2005-06-06 | 2005-06-06 | 61 |  |  | 157d | 0d |  | Srini; Ulli | 8h |  |
| 63 | 1.5.2.10.3 | Perform semantic annotation of UML models | 2d | 2005-06-07 | 2005-06-08 | 62 |  |  | 157d | 0d |  | Ulli | 16h |  |
| 64 | 1.5.2.10.4 | Run UML loader | 2w | 2005-06-09 | 2005-06-22 | 63 |  |  | 157d | 0d |  | NCICB | 80h |  |
| 65 | 1.5.2.10.5 | Review CDEs in staging | 2d | 2005-06-23 | 2005-06-24 | 64 |  |  | 157d | 0d |  | Ulli | 16h |  |
| 66 | 1.5.2.10.6 | Curate additional metadata | 2d | 2005-06-27 | 2005-06-28 | 65 |  |  | 157d | 0d |  | Ulli | 16h |  |
| 67 | 1.5.2.10.7 | Establish baseline documentation and prepare submission package | 1w | 2005-06-29 | 2005-07-05 | 66 |  |  | 157d |  |  | Srini; Ulli | 80h |  |
| 68 | 1.5.3 | **Construction** | 115.5d | 2005-05-20 | 2005-10-28 |  |  |  | 20.5d |  |  |  | 3346h |  |
| 69 | 1.5.3.1 | **Iteration 1: Architecture Prototype (Evolutionary Prototype)** | 38d | 2005-05-20 | 2005-07-13 |  |  |  | 20.5d |  |  |  | 292h |  |
| 70 | 1.5.3.1.1 | **Requirements Analysis** | 16d | 2005-05-20 | 2005-06-13 | 33 |  |  | 14.5d | 0d |  |  | 46h |  |
| 71 | 1.5.3.1.1.1 | Requirements Outline | 7d | 2005-05-20 | 2005-05-31 |  |  |  | 20.5d | 0d |  | Ulli [50%] | 28h |  |
| 72 | 1.5.3.1.1.2 | Complete Requirements Analysis | 3d | 2005-06-08 | 2005-06-13 | 71, 36FF+1d |  |  | 14.5d |  |  | Ulli [50%]; TBD [25%] | 18h |  |
| 73 | 1.5.3.1.2 | Design | 3w | 2005-05-31 | 2005-06-21 | 71, 38FS-5d |  |  | 20.5d | 0d |  | Marc P. [50%]; TBD [25%] | 90h |  |
| 74 | 1.5.3.1.3 | Code | 3w | 2005-06-17 | 2005-07-08 | 73FS-2d |  |  | 20.5d | 0d |  | Marc P. [50%]; Nick | 120h |  |
| 75 | 1.5.3.1.4 | Test | 3d | 2005-07-08 | 2005-07-13 | 74 |  |  | 44.5d | 32.5d |  | QA; Ulli [50%] | 36h |  |
| 76 | 1.5.3.2 | Draft Deployment Scripts | 3d | 2005-07-08 | 2005-07-13 | 74 |  |  | 151.5d |  |  | TBD [25%] | 6h |  |

| ID | WBS | Task | Duration | Start | Finish | Predecessors | Total slack | Free slack | Resources | Work |
| --- | --- | --- | --- | --- | --- | --- | --- | --- | --- | --- |
| 77 | 1.5.3.3 | **Iteration 2: Submit Cancer Models** | 43d | 2005-07-04 | 2005-08-31 | 53 | 0d |  |  | 316h |
| 78 | 1.5.3.3.1 | Requirements Analysis | 2w | 2005-07-04 | 2005-07-15 | 70 | 0d |  | Ulli [75%]; TBD [50%] | 80h |
| 79 | 1.5.3.3.2 | Design | 2w | 2005-07-18 | 2005-07-29 | 78 | 0d |  | TBD [50%] | 40h |
| 80 | 1.5.3.3.3 | Review Wireframes, including CCMG members | 5d | 2005-08-01 | 2005-08-05 | 79 | 0d |  | CCMG Members | 40h |
| 81 | 1.5.3.3.4 | Code | 3w | 2005-08-08 | 2005-08-26 | 80, 74 | 0d |  | Marc P. [50%]; Nick | 120h |
| 82 | 1.5.3.3.5 | Test | 3d | 2005-08-29 | 2005-08-31 | 81, 75 | 12d |  | QA; Ulli [50%] | 36h |
| 83 | 1.5.3.4 | **Iteration 3: Search Cancer Models** | 48d | 2005-07-18 | 2005-09-21 |  | 0d |  |  | 476h |
| 84 | 1.5.3.4.1 | Requirements Analysis | 2w | 2005-07-18 | 2005-07-29 | 78 | 0d |  | TBD [50%]; Ulli [75%] | 80h |
| 85 | 1.5.3.4.2 | **NCICB Security Model Integration** | 15d | 2005-08-01 | 2005-08-19 | 84 | 0d |  |  | 120h |
| 86 | 1.5.3.4.2.1 | Identify and interface with NCICB CSM Services | 5d | 2005-08-01 | 2005-08-05 |  | 0d |  | TBD | 40h |
| 87 | 1.5.3.4.2.2 | Identify and implement UPT Hosting | 5d | 2005-08-08 | 2005-08-12 | 86 | 124d | 0d | TBD | 40h |
| 88 | 1.5.3.4.2.3 | Intergrate into Architectural prototype | 5d | 2005-08-15 | 2005-08-19 | 87 | 124d |  | TBD | 40h |
| 89 | 1.5.3.4.3 | Design | 2w | 2005-08-08 | 2005-08-19 | 79, 86 | 0d |  | Marc P. [50%]; TBD [50%] | 80h |
| 90 | 1.5.3.4.4 | Review Wireframes, including CCMG members | 5d | 2005-08-22 | 2005-08-26 | 89 | 0d |  | CCMG Members | 40h |
| 91 | 1.5.3.4.5 | Code | 3w | 2005-08-29 | 2005-09-16 | 81, 90 | 0d |  | Marc P. [50%]; Nick | 120h |
| 92 | 1.5.3.4.6 | Test | 3d | 2005-09-19 | 2005-09-21 | 91, 82 | 0d |  | QA; Ulli [50%] | 36h |
| 93 | 1.5.3.5 | **Integration Testing Schedule** | 113.5d | 2005-05-24 | 2005-10-28 |  | 0d |  | QA | 2256h |
| 94 | 1.5.3.5.1 | **Develop Test Plan** | 54.5d | 2005-05-24 | 2005-08-08 | 45 | 59d |  | QA | 772h |
| 95 | 1.5.3.5.1.1 | Develop Iteration 1 Test Plan | 6d | 2005-06-13 | 2005-06-21 | 70 | 93.5d |  | QA; Ulli [50%] | 72h |
| 96 | 1.5.3.5.1.2 | Develop Iteration 2 Test Plan | 6d | 2005-07-18 | 2005-07-25 | 78 | 69d |  | QA; Ulli [50%] | 72h |
| 97 | 1.5.3.5.1.3 | Develop Iteration 3 Test Plan | 6d | 2005-08-01 | 2005-08-08 | 84 | 59d |  | QA; Ulli [50%] | 72h |
| 98 | 1.5.3.5.1.4 | Develop Integration Test Plan | 10d | 2005-05-24 | 2005-06-07 |  | 86.5d |  | QA; Ulli [50%] | 120h |
| 99 | 1.5.3.5.2 | Deploy All Iterations to Development Server | 1d | 2005-09-22 | 2005-09-22 | 92 | 0d |  | QA; TBD [50%] | 12h |
| 100 | 1.5.3.5.3 | Development Test All Iterations | 8d | 2005-09-23 | 2005-10-04 | 99 | 0d |  | QA; Ulli; TBD [50%]; Nick | 224h |
| 101 | 1.5.3.5.4 | Deploy All Iteration to Integration Test Server | 1d | 2005-10-05 | 2005-10-05 | 100 | 0d |  | QA; TBD [50%] | 12h |
| 102 | 1.5.3.5.5 | Integration Test All Iterations | 8d | 2005-10-06 | 2005-10-17 | 101, 98 | 0d |  | QA; Ulli | 128h |
| 103 | 1.5.3.5.6 | Deploy All Iterations to Staging Server | 1d | 2005-10-18 | 2005-10-18 | 102 | 0d |  | QA | 8h |
| 104 | 1.5.3.5.7 | UAT Test All Iterations | 8d | 2005-10-19 | 2005-10-28 | 103 | 0d |  | CCMG; Ulli; Fei | 192h |

| ID | WBS | Task | Type | Duration | Start | Finish | Predecessors | Total slack | Free slack | Resources | Work |
| --- | --- | --- | --- | --- | --- | --- | --- | --- | --- | --- | --- |
| 105 | 1.5.4 | **Transition** |  | 5d | 2005-10-31 | 2005-11-04 | 93 | 0d |  |  | 139.6h |
| 106 | 1.5.4.1 | Code Freeze | milestone | 1d | 2005-10-31 | 2005-10-31 | 93 | 2d | 0d | TBD [50%]; Nick | 12h |
| 107 | 1.5.4.2 | Deploy Iteration to Production |  | 2d | 2005-11-01 | 2005-11-02 | 106 | 2d |  | QA | 16h |
| 108 | 1.5.4.3 | **Document Iteration** |  | 5d | 2005-10-31 | 2005-11-04 |  | 0d |  |  | 111.6h |
| 109 | 1.5.4.3.1 | Update User Guides |  | 5d | 2005-10-31 | 2005-11-04 | 93 | 0d |  | Ulli; Nick [50%] | 44h |
| 110 | 1.5.4.3.2 | Update technical / design documentation |  | 5d | 2005-10-31 | 2005-11-04 | 92 | 0d |  | Ulli [50%]; TBD [50%]; Srini [50%] | 49.6h |
| 111 | 1.5.4.3.3 | Regenerate JavaDocs |  | 0.25d | 2005-10-31 | 2005-10-31 | 93 | 4.75d |  | Nick | 2h |
| 112 | 1.5.4.3.4 | Create Release Notes |  | 0.5d | 2005-10-31 | 2005-10-31 | 93 | 3d | 0d | Srini | 4h |
| 113 | 1.5.4.3.5 | Create Known Issues document |  | 0.5d | 2005-10-31 | 2005-10-31 | 112 | 3d | 0d | Srini | 4h |
| 114 | 1.5.4.3.6 | Create Fixed defects document |  | 0.5d | 2005-11-01 | 2005-11-01 | 113 | 3d | 0d | Srini | 4h |
| 115 | 1.5.4.3.7 | Create What's New Document |  | 0.5d | 2005-11-01 | 2005-11-01 | 114 | 3d |  | Srini | 4h |
| 116 | 1.5.5 | Milestone: Complete Version 2 | milestone | 1d | 2005-11-07 | 2005-11-07 | 105 | 0d |  | Srini | 8h |
| 117 | 1.6 | **caMOD Version 2.1** |  | 68d | 2005-11-08 | 2006-02-09 |  | 0d |  |  | 852h |
| 118 | 1.6.1 | **Inception** |  | 6d | 2005-11-08 | 2005-11-15 | 116 | 0d |  |  | 48h |
| 119 | 1.6.1.1 | Identify caMOD 2.1 requirements |  | 3d | 2005-11-08 | 2005-11-10 |  | 0d |  | Srini [50%]; TBD [50%]; Ulli [50%] | 24h |
| 120 | 1.6.1.2 | Identify usability enhancement requirements |  | 3d | 2005-11-11 | 2005-11-15 | 119 | 0d |  | Srini [50%]; TBD [50%]; Ulli [50%] | 24h |
| 121 | 1.6.2 | **Elaboration** |  | 6d | 2005-11-16 | 2005-11-23 | 120 | 0d |  |  | 80h |
| 122 | 1.6.2.1 | Draft caMOD 2.1 Use Cases |  | 1w | 2005-11-16 | 2005-11-22 |  | 0d |  | TBD | 40h |
| 123 | 1.6.2.2 | Review Use Cases, including CCMG members |  | 1d | 2005-11-23 | 2005-11-23 | 122 | 56d |  |  |  |
| 124 | 1.6.2.3 | Draft caMOD 2.1 Test Cases |  | 1w | 2005-11-16 | 2005-11-22 |  | 52d | 0d | Ulli [50%]; Nick [50%] | 40h |
| 125 | 1.6.3 | **Construction** |  | 54d | 2005-11-23 | 2006-02-06 |  | 0d |  |  | 680h |
| 126 | 1.6.3.1 | **Iteration 1: Administration Module** |  | 38d | 2005-11-23 | 2006-01-13 |  | 0d |  |  | 316h |
| 127 | 1.6.3.1.1 | Requirements Analysis |  | 2w | 2005-11-23 | 2005-12-06 | 122 | 0d |  | TBD [50%]; Ulli [75%] | 80h |
| 128 | 1.6.3.1.2 | Design |  | 2w | 2005-12-07 | 2005-12-20 | 127 | 0d |  | Marc P. [50%]; TBD [50%] | 80h |
| 129 | 1.6.3.1.3 | Code |  | 3w | 2005-12-21 | 2006-01-10 | 128 | 0d |  | Marc P. [50%]; Nick | 120h |
| 130 | 1.6.3.1.4 | Test |  | 3d | 2006-01-11 | 2006-01-13 | 129 | 0d |  | QA; Ulli [50%] | 36h |
| 131 | 1.6.3.2 | Develop Iteration 4 Test Plan |  | 2d | 2005-11-23 | 2005-11-24 | 124 | 52d |  | QA; Ulli [50%] | 24h |
| 132 | 1.6.3.3 | Deploy Iteration to Development Server |  | 1d | 2006-01-16 | 2006-01-16 | 130 | 0d |  | QA; TBD [50%] | 12h |
| 133 | 1.6.3.4 | Development Test this Iteration |  | 5d | 2006-01-17 | 2006-01-23 | 132 | 0d |  | QA; Ulli; TBD [50%]; Nick | 140h |
| 134 | 1.6.3.5 | Deploy Iteration to Integration Test Server |  | 1d | 2006-01-24 | 2006-01-24 | 133 | 0d |  | QA; TBD [50%] | 12h |
| 135 | 1.6.3.6 | Integration Test this Iterations |  | 3d | 2006-01-25 | 2006-01-27 | 134 | 0d |  | QA; Ulli | 48h |
| 136 | 1.6.3.7 | Deploy Iteration to Staging Server |  | 1d | 2006-01-30 | 2006-01-30 | 135 | 0d |  | QA | 8h |
| 137 | 1.6.3.8 | UAT Test this Iteration |  | 5d | 2006-01-31 | 2006-02-06 | 136 | 0d |  | CCMG; Ulli; Fei | 120h |

| ID | WBS | Task | Type | Duration | Start | Finish | Predecessors | Total slack | Resources | Work |
| --- | --- | --- | --- | --- | --- | --- | --- | --- | --- | --- |
| 138 | 1.6.4 | **Transition** |  | 3d | 2006-02-07 | 2006-02-09 |  | 0d |  | 44h |
| 139 | 1.6.4.1 | Code Freeze |  | 1d | 2006-02-07 | 2006-02-07 | 125 | 0d | TBD [50%]; Nick | 12h |
| 140 | 1.6.4.2 | Deploy Iteration to Production |  | 2d | 2006-02-08 | 2006-02-09 | 139 | 0d | QA | 16h |
| 141 | 1.6.4.3 | Create Release Notes |  | 0.5d | 2006-02-08 | 2006-02-08 | 139 | 1.5d | Srini | 4h |
| 142 | 1.6.4.4 | Create Known Issues document |  | 0.5d | 2006-02-08 | 2006-02-08 | 139 | 1.5d | Srini | 4h |
| 143 | 1.6.4.5 | Create Fixed defects document |  | 0.5d | 2006-02-08 | 2006-02-08 | 139 | 1.5d | Srini | 4h |
| 144 | 1.6.4.6 | Create What's New Document |  | 0.5d | 2006-02-08 | 2006-02-08 | 139 | 1.5d | Srini | 4h |
| 145 | 1.6.5 | Milestone: Complete Version 2.1 | milestone | 0d | 2006-02-09 | 2006-02-09 | 138 | 0d | Srini |  |
