# camod_2.1_schedule

Schedule from MS Project, 2005-12-29 to 2006-06-15.
nci

## Calendars

- Standard: Mon-Fri 08:00-12:00, 13:00-17:00; Sat-Sun off.

## Resources

| Resource |
| --- |
| CCMG |
| NCICB |
| Srini |
| CCMG Members |
| QA |
| Ulli |
| Nick |
| Team |
| David |
| Marc P. |
| Sima |
| Jill |
| Ajay |
| Derek |
| Davidi |
| Marc |

## Schedule

| ID | WBS | Task | Duration | Start | Finish | Predecessors | Total slack | Free slack | Constraint | Resources | Work |
| --- | --- | --- | --- | --- | --- | --- | --- | --- | --- | --- | --- |
| 1 | 1 | **caMOD Version 2.1** | 121d | 2005-12-29 | 2006-06-15 |  | 0d |  |  |  | 3641.67h |
| 2 | 1.1 | **Inception** | 2.4d | 2005-12-29 | 2006-01-02 |  | 15.6d | 0d |  |  | 48h |
| 3 | 1.1.1 | Identify caMOD 2.1 requirements | 2.4d | 2005-12-29 | 2006-01-02 |  | 17.6d |  | start no earlier than 2005-12-29 | Srini [50%]; Ulli [50%]; David [50%] | 24h |
| 4 | 1.1.2 | Identify usability enhancement requirements | 2.4d | 2005-12-29 | 2006-01-02 |  | 17.6d |  |  | Srini [50%]; Ulli [50%]; David [50%] | 24h |
| 5 | 1.2 | **Elaboration** | 111.1d | 2006-01-02 | 2006-06-06 | 2 | 7.5d |  |  |  | 624h |
| 6 | 1.2.1 | Draft caMOD 2.1 Test Cases | 1w | 2006-01-02 | 2006-01-09 |  | 113.6d |  |  | Ulli [50%]; David [50%]; Ajay [50%] | 60h |
| 7 | 1.2.2 | Draft caMOD 2.1 Usability Enhancement Use Cases | 2w | 2006-01-02 | 2006-01-16 |  | 108.6d |  |  | David [50%]; Ajay [50%]; Ulli [50%] | 120h |
| 8 | 1.2.3 | Draft caMOD 2.1 Use Cases | 2w | 2006-01-02 | 2006-01-16 | 2 | 45.4d | 0d |  | David [50%]; Ajay [50%]; Ulli [50%] | 120h |
| 9 | 1.2.4 | Review Use Cases, including CCMG members | 1d | 2006-01-16 | 2006-04-13 | 8 | 45.4d |  |  | CCMG Members | 8h |
| 10 | 1.2.5 | **caMOD database enhancements** | 38.5d | 2006-01-02 | 2006-02-23 |  | 15.6d |  |  |  | 140h |
| 11 | 1.2.5.1 | Consolidate all DB changes | 1w | 2006-01-02 | 2006-01-09 |  | 17.6d | 0d | start no earlier than 2005-06-06 | Ulli [75%]; Derek [25%] | 40h |
| 12 | 1.2.5.2 | Updated Object Model | 4w | 2006-01-09 | 2006-02-09 | 11 | 17.6d | 0d |  | David [50%] | 80h |
| 13 | 1.2.5.3 | Updated Data Model | 1w | 2006-02-09 | 2006-02-16 | 12 | 17.6d | 0d |  | David [50%] | 20h |
| 14 | 1.2.5.4 | Milestone: Completed ER document | 1w | 2006-02-16 | 2006-02-23 | 13 | 17.6d | 0d |  |  |  |
| 15 | 1.2.6 | **Interface with caDSR** | 20.5d | 2006-05-09 | 2006-06-06 |  | 7.5d |  |  |  | 176h |
| 16 | 1.2.6.1 | Annotate UML model with well formed names and definitions | 3d | 2006-05-09 | 2006-05-11 |  | 7.5d | 0d | start no earlier than 2006-05-09 | Ulli | 24h |
| 17 | 1.2.6.2 | Review semantic connector output | 0.5d | 2006-05-12 | 2006-05-12 | 16 | 7.5d | 0d |  | Srini; Ulli | 8h |
| 18 | 1.2.6.3 | Perform semantic annotation of UML models | 2d | 2006-05-12 | 2006-05-16 | 17 | 7.5d | 0d |  | Ulli | 16h |
| 19 | 1.2.6.4 | Run UML loader | 2w | 2006-05-16 | 2006-05-30 | 18 | 7.5d | 0d |  | NCICB | 80h |
| 20 | 1.2.6.5 | Review CDEs in staging | 2d | 2006-05-30 | 2006-06-01 | 19 | 7.5d | 0d |  | Ulli | 16h |
| 21 | 1.2.6.6 | Curate additional metadata | 2d | 2006-06-01 | 2006-06-05 | 20 | 7.5d | 0d |  | Ulli | 16h |
| 22 | 1.2.6.7 | Establish baseline documentation and prepare submission package | 1d | 2006-06-05 | 2006-06-06 | 21 | 7.5d |  |  | Srini; Ulli | 16h |
| 23 | 1.3 | **Construction** | 110d | 2005-12-29 | 2006-05-31 |  | 4.5d | 0d |  |  | 1212h |
| 24 | 1.3.1 | **Iteration 1** | 110d | 2005-12-29 | 2006-05-31 |  | 4.5d |  |  |  | 1212h |
| 25 | 1.3.1.1 | Requirements Analysis | 3d | 2005-12-29 | 2006-01-02 |  | 107d | 0d |  | David [75%]; Sima [50%] | 30h |
| 26 | 1.3.1.2 | Design | 0.5w | 2006-01-03 | 2006-01-05 | 25 | 107d | 0d |  | David [50%]; Sima [50%] | 20h |
| 27 | 1.3.1.3 | Data cleanup | 2d | 2006-02-23 | 2006-02-27 | 14 | 17.6d | 0d |  | Ulli [75%]; Derek [25%] | 16h |
| 28 | 1.3.1.4 | Create schema migration scripts | 5d | 2006-02-27 | 2006-03-06 | 27 | 17.6d | 0d |  | Derek [75%]; Ulli [25%] | 40h |
| 29 | 1.3.1.5 | Hibernate Mapping changes | 4w | 2006-03-06 | 2006-04-03 | 28 | 17.6d | 0d |  | Sima [50%]; David [50%] | 160h |

| ID | WBS | Task | Duration | Start | Finish | Predecessors | Total slack | Free slack | Constraint | Resources | Work |
| --- | --- | --- | --- | --- | --- | --- | --- | --- | --- | --- | --- |
| 30 | 1.3.1.6 | **Code** | 110d | 2005-12-29 | 2006-05-31 |  | 4.5d | 0d |  |  | 946h |
| 31 | 1.3.1.6.1 | **caMOD usibility enhancements** | 87.5d | 2006-01-05 | 2006-05-08 |  | 21.5d |  |  |  |  |
| 32 | 1.3.1.6.1.1 | Change caMOD to use new EVSTree | 2d | 2006-05-03 | 2006-05-04 |  | 21.5d | 0d | start no earlier than 2006-05-03 |  |  |
| 33 | 1.3.1.6.1.2 | Change caMOD to use caBIO version 3.1 | 2d | 2006-05-05 | 2006-05-08 | 32 | 21.5d |  | start no earlier than 2006-05-04 |  |  |
| 34 | 1.3.1.6.1.3 | #345 - Viewing/submitting images while in https mode has nag message in IE | 2d | 2006-01-05 | 2006-01-09 | 26 | 107d |  |  |  |  |
| 35 | 1.3.1.6.2 | **caMOD RemoteAPI/GRID** | 110d | 2005-12-29 | 2006-05-31 |  | 4.5d |  |  |  | 80h |
| 36 | 1.3.1.6.2.1 | #369 - Create remote interface for caMOD object model | 5mo | 2005-12-29 | 2006-05-17 |  | 4.5d | 0d |  |  |  |
| 37 | 1.3.1.6.2.2 | #359 - Make caMod available in the grid | 2w | 2006-05-18 | 2006-05-31 | 36 | 4.5d |  | start no earlier than 2006-01-09 | Marc | 80h |
| 38 | 1.3.1.6.3 | **caMOD enhancements** | 100d | 2005-12-29 | 2006-05-17 |  | 14.5d |  |  |  | 586h |
| 39 | 1.3.1.6.3.1 | #43 - Gene ID in spon mutation page | 0.5d | 2005-12-29 | 2005-12-29 |  | 113d | 0d |  | Nick | 4h |
| 40 | 1.3.1.6.3.2 | #55 - Feature request - highlight keyword in search result | 1w | 2005-12-29 | 2006-01-04 |  | 109.5d |  |  | Nick | 40h |
| 41 | 1.3.1.6.3.3 | #61 - Sequence Id field on search detail page not populated | 1d | 2005-12-29 | 2005-12-29 |  | 113.5d |  |  | Sima | 8h |
| 42 | 1.3.1.6.3.4 | #225 - Clear Organ name on screens where it is not required | 1d | 2005-12-29 | 2005-12-29 |  | 113.5d |  |  | Nick | 8h |
| 43 | 1.3.1.6.3.5 | #229 - Add help button (=link to online help) to the title of every page | 1d | 2006-05-15 | 2006-05-15 | 39 | 16.5d |  | start no earlier than 2006-05-15 | Nick | 8h |
| 44 | 1.3.1.6.3.6 | #237 - Add the ability to remove an image from Eng. Trans, Gen. Seg or Targ. Mod. | 1d | 2005-12-29 | 2005-12-29 |  | 113.5d |  |  | Nick | 8h |
| 45 | 1.3.1.6.3.7 | #238 - Make search result list configurable | 2w | 2006-02-20 | 2006-03-03 |  | 66d | 0d | start no earlier than 2006-02-20 | Sima [50%]; David [25%]; Nick [50%] | 100h |
| 46 | 1.3.1.6.3.8 | #249 - No "other" can be choose from Donor Species | 0.5d | 2006-03-06 | 2006-03-06 | 45 | 67d |  |  | Sima | 4h |
| 47 | 1.3.1.6.3.9 | #261 - Add the ability to save search queries for reuse | 7w | 2006-03-30 | 2006-05-17 |  | 14.5d |  | start no earlier than 2006-03-30 | Nick [50%]; Sima [50%]; David [25%] | 350h |
| 48 | 1.3.1.6.3.10 | #272 - Add diagnosis to the summary on the histopath search page | 0.5d | 2006-03-06 | 2006-03-06 | 45 | 66d | 47.5d |  | David | 4h |
| 49 | 1.3.1.6.3.11 | #289 - information if mouse is a tool mouse doesn't show up on mod char search page | 0.5d | 2005-12-29 | 2005-12-29 |  | 114d |  |  | Sima | 4h |
| 50 | 1.3.1.6.3.12 | #290 - Cell Line Publication - throws uncaught connection error | 2d | 2006-05-11 | 2006-05-12 |  | 17.5d |  | start no earlier than 2006-05-11 | Nick | 16h |
| 51 | 1.3.1.6.3.13 | #295 - Verify all free text fields allow html markup | 1d | 2006-05-11 | 2006-05-11 | 48 | 18.5d |  | start no earlier than 2006-05-11 | David | 8h |
| 52 | 1.3.1.6.3.14 | #297 - Missed camod:shorten tag for therapeutic approaches | 0.5d | 2006-02-27 | 2006-02-28 | 27 | 71.1d |  |  | David | 4h |
| 53 | 1.3.1.6.3.15 | #302 - Allow user to search for metastasis in specific organ or for metastatic models in general on Advanced Search page | 2d | 2006-05-15 | 2006-05-16 |  | 15.5d |  | start no earlier than 2006-05-15 | Sima | 16h |
| 54 | 1.3.1.6.3.16 | #371 - Force/validate lowercase usernames on entry | 0.5d | 2006-05-17 | 2006-05-17 |  | 15d |  | start no earlier than 2006-05-17 | David | 4h |

| ID | WBS | Task | Type | Duration | Start | Finish | Predecessors | Total slack | Free slack | Constraint | Resources | Work |
| --- | --- | --- | --- | --- | --- | --- | --- | --- | --- | --- | --- | --- |
| 55 | 1.3.1.6.4 | **caMOD database enhancements** |  | 31d | 2006-04-03 | 2006-05-16 | 29 | 15.6d |  |  |  | 240h |
| 56 | 1.3.1.6.4.1 | Cascade 2.1 OM changes through code |  | 2w | 2006-04-03 | 2006-04-17 |  | 15.6d | 0d |  | David | 80h |
| 57 | 1.3.1.6.4.2 | #43 - DB - Gene ID in spon mutation page |  | 0.5d | 2006-04-17 | 2006-04-18 | 56 | 15.6d | 0d |  | Nick | 4h |
| 58 | 1.3.1.6.4.3 | #249 - No "other" can be choose from Donor Species |  | 0.5d | 2006-04-18 | 2006-04-18 | 57 | 15.6d | 0d |  | Sima | 4h |
| 59 | 1.3.1.6.4.4 | #296 - DB - wrong display of targeted vs random integration of transgene and genomic segment |  | 1d | 2006-04-18 | 2006-04-19 | 58 | 15.6d | 0d |  | David | 8h |
| 60 | 1.3.1.6.4.5 | #303 - DB - Add field to publication table to store the J number |  | 1d | 2006-04-19 | 2006-04-20 | 59 | 15.6d | 0d |  |  |  |
| 61 | 1.3.1.6.4.6 | #326 - DB - Remove Duplicates in the taxon table and consider splitting the taxon table in species and strain table (back to what we... |  | 3d | 2006-04-20 | 2006-04-25 | 60 | 15.6d | 0d |  | David | 24h |
| 62 | 1.3.1.6.4.7 | #327 - DB - Investigate enhancing the design for organ/disease table relations |  | 2d | 2006-04-25 | 2006-04-27 | 61 | 15.6d | 0d |  | David | 16h |
| 63 | 1.3.1.6.4.8 | #328 - DB - Remove any unecessary cross-reference tables |  | 3d | 2006-04-27 | 2006-05-02 | 62 | 15.6d | 0d |  | David | 24h |
| 64 | 1.3.1.6.4.9 | #333 - DB - Tackle env factor vs agent and therapy vs carcinogenic intervention problems |  | 1w | 2006-05-02 | 2006-05-09 | 63 | 15.6d | 0d |  | David | 40h |
| 65 | 1.3.1.6.4.10 | #334 - DB - Change “tumorProgression” to “tumorResponse” in the therapy object |  | 0.5d | 2006-05-09 | 2006-05-10 | 64 | 15.6d | 0d |  | Sima | 4h |
| 66 | 1.3.1.6.4.11 | #335 - DB - The inhibition rate field in the screening_results table for the yeast data is not used. |  | 1d | 2006-05-10 | 2006-05-11 | 65 | 15.6d | 0d |  | Nick | 8h |
| 67 | 1.3.1.6.4.12 | #338 - DB - Add an other option to the drop-down list of clinical marker |  | 0.5d | 2006-05-11 | 2006-05-11 | 66 | 15.6d | 0d |  | Sima | 4h |
| 68 | 1.3.1.6.4.13 | #340 - DB - Change the relationship between animal_availibility and animal_distributor objects |  | 1d | 2006-05-11 | 2006-05-12 | 67 | 15.6d | 0d |  | Sima | 8h |
| 69 | 1.3.1.6.4.14 | #343 - DB - Change Harvest_date from a date field to a varchar |  | 0.5d | 2006-05-12 | 2006-05-15 | 68 | 15.6d | 0d |  | Sima | 4h |
| 70 | 1.3.1.6.4.15 | #346 - DB - Change MGI number to a varchar field |  | 0.5d | 2006-05-15 | 2006-05-15 | 69 | 15.6d | 0d |  | Sima | 4h |
| 71 | 1.3.1.6.4.16 | #348 - DB - Add an uncontrolledVocab for administative route to Ab Cancer Model for Xenograft. |  | 1d | 2006-05-15 | 2006-05-16 | 70 | 15.6d |  |  | Sima | 8h |
| 72 | 1.3.1.6.4.17 | #376 - Update caMOD for JDK 1.5 collections and change from List to Set |  | 1w | 2006-04-03 | 2006-04-10 |  | 41.6d |  |  |  |  |
| 73 | 1.3.1.6.5 | **EVS modifications** |  | 10d | 2005-12-29 | 2006-01-11 |  | 104.5d |  |  |  | 40h |
| 74 | 1.3.1.6.5.1 | #280 - EVS Tree - show species specific anatomy vocabularies |  | 2d | 2005-12-29 | 2005-12-30 |  | 104.5d | 0d |  |  |  |
| 75 | 1.3.1.6.5.2 | #320 - Find ways to speed up the entry of organs and diagnoses |  | 1w | 2006-01-02 | 2006-01-06 | 74 | 104.5d | 0d |  | David | 40h |
| 76 | 1.3.1.6.5.3 | #281 - EVS Tree - utilize the staining vocabulary |  | 3d | 2006-01-09 | 2006-01-11 | 75 | 104.5d |  |  |  |  |
| 77 | 1.3.2 | Milestone: coding completed | milestone | 0d | 2006-05-31 | 2006-05-31 | 30 | 4.5d | 0d |  | David [25%] |  |
| 78 | 1.4 | **Integration Testing Schedule** |  | 119d | 2005-12-29 | 2006-06-13 |  | 2d |  |  | QA | 1572h |
| 79 | 1.4.1 | **Develop Test Plan** |  | 10d | 2005-12-29 | 2006-01-11 |  | 111d |  |  | QA | 272h |
| 80 | 1.4.1.1 | Develop release Test Plan |  | 6d | 2005-12-29 | 2006-01-05 |  | 115d |  |  | QA; Davidi [50%] | 72h |
| 81 | 1.4.1.2 | Develop Integration Test Plan |  | 10d | 2005-12-29 | 2006-01-11 |  | 111d |  |  | QA; David [50%] | 120h |
| 82 | 1.4.2 | Deploy to Development Server |  | 1d | 2005-12-29 | 2005-12-29 |  | 120d |  |  | QA | 8h |
| 83 | 1.4.3 | Development Test |  | 5.6d | 2005-12-29 | 2006-01-05 |  | 115.4d |  |  | QA; Ulli; Nick; Sima; David | 224h |
| 84 | 1.4.4 | Deploy to Integration Test Server |  | 1.5d | 2006-06-01 | 2006-06-02 | 77 | 4.5d | 0d |  | QA | 12h |
| 85 | 1.4.5 | Integration Test |  | 5d | 2006-06-02 | 2006-06-09 | 84 | 4.5d |  |  | QA; Ulli | 80h |
| 86 | 1.4.6 | Deploy to Staging Server |  | 1d | 2006-06-13 | 2006-06-13 |  | 2d |  | finish no earlier than 2006-06-13 | QA | 8h |
| 87 | 1.4.7 | Test on Staging Server |  | 2d | 2006-06-12 | 2006-06-13 |  | 1d | 0d | finish no earlier than 2006-06-13 | QA | 16h |

| ID | WBS | Task | Type | Duration | Start | Finish | Predecessors | Total slack | Free slack | Constraint | Resources | Work |
| --- | --- | --- | --- | --- | --- | --- | --- | --- | --- | --- | --- | --- |
| 88 | 1.5 | **Transition** |  | 24d | 2006-05-15 | 2006-06-15 |  | 0d |  |  |  | 185.67h |
| 89 | 1.5.1 | Milestone: Test All Iterations | milestone | 0d | 2006-06-13 | 2006-06-13 | 87 | 1d |  |  | CCMG; Ulli |  |
| 90 | 1.5.2 | Milestone: Code Freeze |  | 1d | 2006-06-01 | 2006-06-01 | 23 | 10d |  |  | David | 8h |
| 91 | 1.5.3 | Milestone: Deploy Iteration to Production |  | 1d | 2006-06-15 | 2006-06-15 | 89 | 0d |  | start no earlier than 2006-06-15 | QA | 8h |
| 92 | 1.5.4 | **Document Iteration** |  | 16d | 2006-05-15 | 2006-06-05 |  | 8d |  |  |  | 169.67h |
| 93 | 1.5.4.1 | Create User Guides |  | 6d | 2006-05-15 | 2006-05-22 |  | 8d | 0d | start no earlier than 2006-05-15 | Ulli [50%]; Jill [50%] | 44h |
| 94 | 1.5.4.2 | Update online help documentation |  | 4d | 2006-05-23 | 2006-05-26 | 93 | 8d | 0d |  | Ulli [50%]; Srini [50%]; Jill [50%]; David [50%] | 54.83h |
| 95 | 1.5.4.3 | Update technical / design documentation |  | 4d | 2006-05-29 | 2006-06-01 | 94 | 8d | 0d |  | Ulli [50%]; Srini [50%]; Jill [50%]; David [50%] | 54.84h |
| 96 | 1.5.4.4 | Create Release Notes |  | 0.5d | 2006-06-02 | 2006-06-02 | 95 | 8d | 0d |  | Ulli | 4h |
| 97 | 1.5.4.5 | Create Known Issues document |  | 0.5d | 2006-06-02 | 2006-06-02 | 96 | 8d | 0d |  | Ulli | 4h |
| 98 | 1.5.4.6 | Create Fixed defects document |  | 0.5d | 2006-06-05 | 2006-06-05 | 97 | 8d | 0d |  | Ulli | 4h |
| 99 | 1.5.4.7 | Create What's New Document |  | 0.5d | 2006-06-05 | 2006-06-05 | 98 | 8d |  |  | Ulli | 4h |
| 100 | 1.6 | Milestone: Complete Version 2.1 | milestone | 0d | 2006-06-15 | 2006-06-15 | 91, 99 | 0d |  |  | Ulli |  |
