# caMOD 2.2

Schedule from MS Project, 2006-06-26 to 2007-05-14.
SAIC

## Calendars

- Standard: Mon-Fri 08:00-12:00, 13:00-17:00; Sat-Sun off.

## Resources

| Resource |
| --- |
| GuruswamiS |
| NCICB |
| BasuA |
| WagnerU |
| QA |
| PandyaS |
| DBA |
| 2nd Resource |

## Schedule

| ID | WBS | Task | Type | Duration | Start | Finish | Predecessors | Total slack | Free slack | Constraint | Resources | Work |
| --- | --- | --- | --- | --- | --- | --- | --- | --- | --- | --- | --- | --- |
| 1 | 1 | **caMOD 2.3 Release** |  | 231d? | 2006-06-26 | 2007-05-14 |  | 0d |  |  |  | 4552h |
| 2 | 1.1 | **Project Management and Control** |  | 80d | 2006-06-26 | 2006-10-13 |  | 2d |  |  |  | 1280h |
| 3 | 1.1.1 | Project Management |  | 80d | 2006-06-26 | 2006-10-13 |  | 2d |  |  | GuruswamiS | 640h |
| 4 | 1.1.2 | Project Control |  | 80d | 2006-06-26 | 2006-10-13 |  | 2d |  |  | GuruswamiS | 640h |
| 5 | 1.2 | **Inception Phase** |  | 154d | 2006-06-26 | 2007-01-25 |  | 77d |  |  |  | 248h |
| 6 | 1.2.1 | **Requirements Gathering** |  | 138d | 2006-06-26 | 2007-01-03 |  | 0d |  |  |  | 88h |
| 7 | 1.2.1.1 | NCICB/MMHCC team |  | 1w | 2006-12-20 | 2006-12-26 |  | 5d |  | start no earlier than 2006-12-20 | NCICB | 40h |
| 8 | 1.2.1.2 | Determine Basic Use Cases |  | 1w | 2006-06-26 | 2006-06-30 |  | 13d | 0d |  | NCICB | 40h |
| 9 | 1.2.1.3 | Prioritize Use Cases |  | 1d | 2007-01-03 | 2007-01-03 | 7, 8 | 0d |  | start no earlier than 2007-01-03 | NCICB | 8h |
| 10 | 1.2.2 | **Documentation** |  | 16d | 2007-01-04 | 2007-01-25 |  | 0d |  |  |  | 160h |
| 11 | 1.2.2.1 | Draft Project Plan |  | 5d | 2007-01-19 | 2007-01-25 |  | 52d | 0d | start no earlier than 2007-01-19 | GuruswamiS; PandyaS | 40h |
| 12 | 1.2.2.2 | Draft Requirements Specification Document |  | 1w | 2007-01-04 | 2007-01-10 | 9 | 0d |  |  | PandyaS | 40h |
| 13 | 1.2.2.3 | Draft Test Plan |  | 1w | 2007-01-11 | 2007-01-17 | 12 | 78d | 0d |  | QA | 40h |
| 14 | 1.2.2.4 | Draft Test Cases |  | 1w | 2007-01-18 | 2007-01-24 | 13 | 78d |  |  | QA | 40h |
| 15 | 1.2.3 | Milestone: General Requirements Captured & Priortized | milestone | 0d | 2007-01-10 | 2007-01-10 | 12 | 0d |  |  | BasuA |  |
| 16 | 1.3 | **Elaboration Phase** |  | 66d? | 2007-01-10 | 2007-04-12 |  | 0d |  |  |  | 2496h |
| 17 | 1.3.1 | **Architecture** |  | 6d | 2007-01-10 | 2007-01-18 |  | 0d |  |  |  | 48h |
| 18 | 1.3.1.1 | Internal review with MMHCC Team | milestone | 0d | 2007-01-10 | 2007-01-10 | 15 | 0d |  |  | NCICB |  |
| 19 | 1.3.1.2 | Incorporate Comments/Feedback from the team review |  | 1d | 2007-01-11 | 2007-01-11 | 18 | 0d |  |  | WagnerU | 8h |
| 20 | 1.3.1.3 | Review use cases / design with the "Review Board" | milestone | 0d | 2007-01-11 | 2007-01-11 | 19 | 0d |  |  | PandyaS |  |
| 21 | 1.3.1.4 | Draft design document (caBIG template) |  | 1w | 2007-01-12 | 2007-01-18 | 20 | 0d |  |  | PandyaS | 40h |
| 22 | 1.3.1.5 | Milestone: Completed Design document | milestone | 0d | 2007-01-18 | 2007-01-18 | 21 | 0d |  |  | BasuA |  |
| 23 | 1.3.2 | **Database Cleanup** |  | 3d? | 2007-01-26 | 2007-01-30 | 11 | 52d |  |  |  | 56h |
| 24 | 1.3.2.1 | Data Issue - current genetic background |  | 1d? | 2007-01-26 | 2007-01-26 |  | 54d |  |  | WagnerU | 8h |
| 25 | 1.3.2.2 | Data Issue - review and if reasonable delete all records that have been in the incomplete state for more than 2 years |  | 1d? | 2007-01-26 | 2007-01-26 |  | 54d |  |  | WagnerU | 8h |
| 26 | 1.3.2.3 | Data - inactivate screened-rejected records submitted by intramural researchers |  | 1d? | 2007-01-26 | 2007-01-26 |  | 54d |  |  | WagnerU | 8h |
| 27 | 1.3.2.4 | Clean up files |  | 1d? | 2007-01-26 | 2007-01-26 |  | 54d |  |  | WagnerU | 8h |
| 28 | 1.3.2.5 | Modify Data - need to assign zebrafish organs instead of mouse organs on histopath page |  | 3d | 2007-01-26 | 2007-01-30 |  | 52d |  |  | WagnerU | 24h |

| ID | WBS | Task | Duration | Start | Finish | Predecessors | Total slack | Resources | Work |
| --- | --- | --- | --- | --- | --- | --- | --- | --- | --- |
| 29 | 1.3.3 | **Itreration 1: Bug fixes & usability enhancements** | 8d | 2007-01-19 | 2007-01-30 | 22 | 52d |  | 336h |
| 30 | 1.3.3.1 | **Search Features** | 8d | 2007-01-19 | 2007-01-30 |  | 52d | PandyaS | 272h |
| 31 | 1.3.3.1.1 | Customizing search results doesn't work when carcinogen is selected | 1w | 2007-01-19 | 2007-01-25 |  | 55d | PandyaS | 40h |
| 32 | 1.3.3.1.2 | Adv search for carcinogens does not include data from Jackson Lab | 1w | 2007-01-19 | 2007-01-25 |  | 55d | PandyaS | 40h |
| 33 | 1.3.3.1.3 | Fix Jax lab availability link and data | 1d | 2007-01-19 | 2007-01-19 |  | 59d | PandyaS | 8h |
| 34 | 1.3.3.1.4 | Fix searches - table of contents shows only selection of organ systems | 8d | 2007-01-19 | 2007-01-30 |  | 52d | PandyaS | 64h |
| 35 | 1.3.3.1.5 | Fix MGI link on genetic description pages and at the same time fix existing data | 3d | 2007-01-19 | 2007-01-23 |  | 57d | PandyaS | 24h |
| 36 | 1.3.3.1.6 | Fix model records with missing PI | 2d | 2007-01-19 | 2007-01-22 |  | 58d | PandyaS | 16h |
| 37 | 1.3.3.1.7 | MTB radiation data are not shown | 2d | 2007-01-19 | 2007-01-22 |  | 58d | PandyaS | 16h |
| 38 | 1.3.3.2 | **Submission Features** | 3d | 2007-01-19 | 2007-01-23 | 22 | 57d | PandyaS | 64h |
| 39 | 1.3.3.2.1 | Can not delete nomenclature on model char submission page | 2d | 2007-01-19 | 2007-01-22 |  | 58d | PandyaS | 16h |
| 40 | 1.3.3.2.2 | Nomenclature submssion field adds data when model is edited | 3d | 2007-01-19 | 2007-01-23 |  | 57d | PandyaS | 24h |
| 41 | 1.3.4 | **Iteration 2: Additional Features Added to caMOD** | 60d | 2007-01-19 | 2007-04-12 | 22 | 0d |  | 2056h |
| 42 | 1.3.4.1 | Admin Section Needs Additional Filters | 2w | 2007-01-19 | 2007-02-01 |  | 50d | PandyaS | 80h |
| 43 | 1.3.4.2 | Use improved PubMed fetch script on publication submission page | 3d | 2007-01-19 | 2007-01-23 |  | 57d | PandyaS | 24h |
| 44 | 1.3.4.3 | Do not delete EnvironmentalFactor objects - instead reuse and leave in DB | 2d | 2007-01-19 | 2007-01-22 |  | 58d | PandyaS | 16h |
| 45 | 1.3.4.4 | Upgrade to a new version of struts | 1w | 2007-01-19 | 2007-01-25 |  | 55d | PandyaS | 40h |
| 46 | 1.3.4.5 | Configure our app to use a JNDI data source | 1w | 2007-01-19 | 2007-01-25 |  | 55d | PandyaS | 40h |
| 47 | 1.3.4.6 | **EVSTree - caMOD-side work** | 10d | 2007-02-02 | 2007-02-15 |  | 40d |  | 120h |
| 48 | 1.3.4.6.1 | Show species specific anatomy vocabularies (caMOD changes) | 1w | 2007-02-09 | 2007-02-15 | 68 | 40d | PandyaS | 40h |
| 49 | 1.3.4.6.2 | Utilize the staining vocabulary (caMOD changes) | 1w | 2007-02-02 | 2007-02-08 | 69 | 45d | PandyaS | 40h |
| 50 | 1.3.4.6.3 | Use mouse and rat strains from NCI Thesaurus (caMOD changes) | 1w | 2007-02-02 | 2007-02-08 | 71 | 45d | PandyaS | 40h |
| 51 | 1.3.4.7 | **ZEBRAFISH Specific Support in caMOD** | 5d | 2007-01-19 | 2007-01-25 |  | 55d |  | 184h |
| 52 | 1.3.4.7.1 | Add age drop down list to model characteristics submission and search page | 3d | 2007-01-19 | 2007-01-23 |  | 57d | PandyaS | 24h |
| 53 | 1.3.4.7.2 | Add drop down list for Site to morpholino submission and search page | 3d | 2007-01-19 | 2007-01-23 |  | 57d | PandyaS | 24h |
| 54 | 1.3.4.7.3 | Add drop down list for delivery method to morpholino submission and search page | 3d | 2007-01-19 | 2007-01-23 |  | 57d | PandyaS | 24h |
| 55 | 1.3.4.7.4 | Modify histopathology page - make diagnosis field free text or used Hatem's list | 1w | 2007-01-19 | 2007-01-25 |  | 55d | PandyaS | 40h |
| 56 | 1.3.4.7.5 | Modify availability pages - add page for zfin, keep investigator page | 3d | 2007-01-19 | 2007-01-23 |  | 57d | PandyaS | 24h |
| 57 | 1.3.4.7.6 | Modify genetic description pages - link to zfin.org for allele details | 3d | 2007-01-19 | 2007-01-23 |  | 57d | PandyaS | 24h |
| 58 | 1.3.4.7.7 | Modify therapy page - add drop down list for developmental stage | 3d | 2007-01-19 | 2007-01-23 |  | 57d | PandyaS | 24h |
| 59 | 1.3.4.7.8 | Add "small molecules" to chemical class list on therapy submission page | 1d | 2007-01-19 | 2007-01-19 |  | 59d |  |  |
| 60 | 1.3.4.7.9 | Add conditioning regimen dropdown to xenograft page | 3d | 2007-01-19 | 2007-01-23 |  | 57d |  |  |

| ID | WBS | Task | Duration | Start | Finish | Predecessors | Total slack | Free slack | Resources | Work |
| --- | --- | --- | --- | --- | --- | --- | --- | --- | --- | --- |
| 61 | 1.3.4.8 | **Iteration : Additional Features Outside caMOD Application Code** | 60d | 2007-01-19 | 2007-04-12 |  | 0d |  |  | 1552h |
| 62 | 1.3.4.8.1 | **EVSTree** | 40d | 2007-01-19 | 2007-03-15 |  | 0d |  | 2nd Resource | 1192h |
| 63 | 1.3.4.8.1.1 | **Architecture and Design** | 5d | 2007-01-19 | 2007-01-25 |  | 35d |  |  | 48h |
| 64 | 1.3.4.8.1.1.1 | Use Case and Design Doc (caBIG template) | 1w | 2007-01-19 | 2007-01-25 |  | 35d |  | 2nd Resource | 40h |
| 65 | 1.3.4.8.1.1.2 | Review use cases / design with the "Review Board" | 1d | 2007-01-19 | 2007-01-19 |  | 39d |  | 2nd Resource | 8h |
| 66 | 1.3.4.8.1.2 | **Implementation and Testing** | 40d | 2007-01-19 | 2007-03-15 |  | 0d |  |  | 824h |
| 67 | 1.3.4.8.1.2.1 | Restore the association between organ and diagnosis | 8w | 2007-01-19 | 2007-03-15 |  | 0d |  | 2nd Resource | 320h |
| 68 | 1.3.4.8.1.2.2 | Show species specific anatomy vocabularies | 3w | 2007-01-19 | 2007-02-08 |  | 25d | 0d | 2nd Resource | 120h |
| 69 | 1.3.4.8.1.2.3 | Utilize the staining vocabulary | 2w | 2007-01-19 | 2007-02-01 |  | 30d | 0d | 2nd Resource | 80h |
| 70 | 1.3.4.8.1.2.4 | Annoyances with EVS organ tree | 4w | 2007-01-19 | 2007-02-15 |  | 20d |  | 2nd Resource | 160h |
| 71 | 1.3.4.8.1.2.5 | Use mouse and rat strains from NCI Thesaurus | 2w | 2007-01-19 | 2007-02-01 |  | 30d | 0d | 2nd Resource | 80h |
| 72 | 1.3.4.8.1.2.6 | Selecting search results in tree causes HTTP 404 Error | 3d | 2007-01-19 | 2007-01-23 |  | 37d |  | 2nd Resource | 24h |
| 73 | 1.3.4.8.1.2.7 | Crash - when trying to select search result page crashes | 1w | 2007-01-19 | 2007-01-25 |  | 35d |  | 2nd Resource | 40h |
| 74 | 1.3.4.8.2 | **Remote API / Grid** | 55d | 2007-01-19 | 2007-04-05 |  | 5d |  |  | 280h |
| 75 | 1.3.4.8.2.1 | Remote API - Upgrade to 1.0 of Tool Kit | 1w | 2007-01-19 | 2007-01-25 |  | 55d |  | PandyaS | 40h |
| 76 | 1.3.4.8.2.2 | Make caMod available in the grid (production) | 1w | 2007-01-19 | 2007-01-25 |  | 55d |  | PandyaS | 40h |
| 77 | 1.3.4.8.2.3 | Map API to latest OM (2.2) | 2w | 2007-01-19 | 2007-02-01 |  | 50d |  | PandyaS | 80h |
| 78 | 1.3.4.8.2.4 | Make only edited-approved models available through API | 3w | 2007-03-16 | 2007-04-05 | 62 | 0d |  | PandyaS | 120h |
| 79 | 1.3.4.8.3 | **Configuration Tasks** | 60d | 2007-01-19 | 2007-04-12 |  | 0d |  |  | 80h |
| 80 | 1.3.4.8.3.1 | Create automated deployment enviroment on dev server | 1w | 2007-01-19 | 2007-01-25 |  | 55d |  | PandyaS | 40h |
| 81 | 1.3.4.8.3.2 | Move caMOD to Gforge | 1w | 2007-04-06 | 2007-04-12 | 78 | 0d |  | PandyaS | 40h |
| 82 | 1.4 | **Transition Phase** | 22d | 2007-04-13 | 2007-05-14 | 16 | 0d |  |  | 528h |
| 83 | 1.4.1 | **QA** | 5d | 2007-04-13 | 2007-04-19 |  | 0d |  | QA | 120h |
| 84 | 1.4.1.1 | Finalize Testplan | 1w | 2007-04-13 | 2007-04-19 |  | 0d |  | QA | 40h |
| 85 | 1.4.1.2 | Finalize Test Cases | 1w | 2007-04-13 | 2007-04-19 |  | 0d |  | QA | 40h |

| ID | WBS | Task | Duration | Start | Finish | Predecessors | Total slack | Resources | Work |
| --- | --- | --- | --- | --- | --- | --- | --- | --- | --- |
| 86 | 1.4.2 | **Deploy** | 17d | 2007-04-20 | 2007-05-14 | 83 | 0d |  | 408h |
| 87 | 1.4.2.1 | **QA Server Deployment** | 10d | 2007-04-20 | 2007-05-03 |  | 0d | PandyaS | 240h |
| 88 | 1.4.2.1.1 | QA Testing | 2w | 2007-04-20 | 2007-05-03 |  | 0d | WagnerU; PandyaS | 160h |
| 89 | 1.4.2.2 | **Staging Server Deployment** | 5d | 2007-05-04 | 2007-05-10 |  | 0d | PandyaS | 120h |
| 90 | 1.4.2.2.1 | Staging Testing | 1w | 2007-05-04 | 2007-05-10 | 88 | 0d | WagnerU; PandyaS | 80h |
| 91 | 1.4.2.3 | **Production Server Deployment** | 2d | 2007-05-11 | 2007-05-14 |  | 0d | PandyaS | 48h |
| 92 | 1.4.2.3.1 | Production Verification | 2d | 2007-05-11 | 2007-05-14 | 90 | 0d | WagnerU; PandyaS | 32h |
