# caMOD 2.2

Schedule from MS Project, 2007-09-28 to 2008-02-05, A marks actual dates.
SAIC

## Calendars

- Standard: Mon-Fri 08:00-12:00, 13:00-17:00; Sat-Sun off.

## Resources

| Resource |
| --- |
| GuruswamiS |
| NCICB |
| Anand |
| Ulli |
| QA |
| Sima |
| DBA |
| 2nd Resource |
| Sima |
| Srini |
| Grid Resource |
| App Support |
| Systems |
| Jill |

## Schedule

| ID | WBS | Task | Type | Duration | Start | Finish | Predecessors | Complete | Remaining | Total slack | Free slack | Constraint | Resources | Work | Actual work |
| --- | --- | --- | --- | --- | --- | --- | --- | --- | --- | --- | --- | --- | --- | --- | --- |
| 1 | 1 | **caMOD 2.4 Release** |  | 93d? | 2007-09-28 A | 2008-02-05 |  | 59% | 38.48d? | 0d |  |  |  | 1160h | 552.68h |
| 2 | 1.1 | **Inception Phase** |  | 16d | 2007-09-28 A | 2007-10-19 A |  | 100% |  |  |  |  |  | 48h | 48h |
| 3 | 1.1.1 | Use Case and Design Doc (caBIG template) |  | 2w | 2007-09-28 A | 2007-10-11 A |  | 100% |  |  |  |  | Sima [50%] | 40h | 40h |
| 4 | 1.1.2 | Review use cases / design with the "Review Board" |  | 6d | 2007-10-12 A | 2007-10-19 A | 3 | 100% |  |  |  |  | Sima | 8h | 8h |
| 5 | 1.2 | Milestone: Completed Design document | milestone | 0d | 2007-10-19 A | 2007-10-19 A | 4 | 100% |  |  |  |  | Anand |  |  |
| 6 | 1.3 | **Elaboration Phase** |  | 54d | 2007-10-22 A | 2008-01-03 A |  | 100% |  |  |  |  |  | 176h | 176h |
| 7 | 1.3.1 | Incorporate changes to the Object Model |  | 3d | 2007-10-22 A | 2007-10-24 A | 5 | 100% |  |  |  |  | Ulli | 24h | 24h |
| 8 | 1.3.2 | Make code changes due to Object Model changes |  | 5d | 2007-10-25 A | 2007-10-31 A | 7 | 100% |  |  |  |  | Sima | 40h | 40h |
| 9 | 1.3.3 | Milestone: Soft Freeze Object Model | milestone | 2d | 2007-11-01 A | 2007-11-02 A | 8 | 100% |  |  |  |  | Ulli | 16h | 16h |
| 10 | 1.3.4 | Round Trip, Import XMI into EA |  | 2d | 2007-11-05 A | 2007-11-06 A | 9 | 100% |  |  |  |  | Ulli | 16h | 16h |
| 11 | 1.3.5 | Create valute domains for caDSR |  | 18d | 2007-12-11 A | 2008-01-03 A | 10 | 100% |  |  |  | finish no earlier than 2008-01-03 | Ulli | 80h | 80h |
| 12 | 1.4 | Milestone: Model Registered in CADSR | milestone | 0d | 2007-09-28 A | 2007-09-28 A |  | 100% |  |  |  |  |  |  |  |
| 13 | 1.5 | **iteration 1:** |  | 77d? | 2007-10-22 A | 2008-02-05 |  | 34% | 50.64d? | 0d |  |  |  | 936h | 328.68h |
| 14 | 1.5.1 | **EVSTree Application-side work** |  | 26d | 2007-11-05 A | 2007-12-10 |  | 71% | 7.5d | 41d |  |  | Sima | 400h | 271.08h |
| 15 | 1.5.1.1 | **Implementation and Testing** |  | 26d | 2007-11-05 A | 2007-12-10 |  | 71% | 7.5d | 41d |  |  | Sima | 232h | 151.54h |
| 16 | 1.5.1.1.1 | Search does not work for Staining vocabulary (#11022) |  | 7d | 2007-11-05 | 2007-11-13 | 9 |  |  | 60d |  |  | Sima | 32h |  |
| 17 | 1.5.1.1.2 | Remove link for search results (#10818) |  | 1.4w | 2007-11-14 A | 2007-11-22 A | 16 | 100% |  |  |  |  | Sima | 32h | 32h |
| 18 | 1.5.1.1.3 | Search does not work for rat anatomy (#7790) |  | 3d | 2007-11-23 A | 2007-11-27 A | 17 | 100% |  |  |  |  |  |  |  |
| 19 | 1.5.1.1.4 | Search does not work for zebrafish vocabularies (#7387) |  | 3d | 2007-11-28 A | 2007-11-30 A | 18 | 100% |  |  |  |  |  |  |  |
| 20 | 1.5.1.1.5 | Alternate search terms are only shown when matches in the existing trees are found (#9277) |  | 1d | 2007-12-03 A | 2007-12-03 A | 19 | 100% |  |  |  |  |  |  |  |
| 21 | 1.5.1.1.6 | Tree doesn't jump to the highlighted term after performing search (#9274) |  | 5d | 2007-12-04 A | 2007-12-10 | 20 | 90% | 0.5d | 32.2d | 0d |  |  |  |  |
| 22 | 1.5.2 | **caMOD - caELMIR Integration Tasks** |  | 17d | 2007-12-11 A | 2008-01-02 |  | 48% | 8.8d | 24d |  |  |  | 120h | 57.6h |
| 23 | 1.5.2.1 | Implement Therapy Screen for caELMIR data (#8816) |  | 2.2w | 2007-12-11 A | 2007-12-25 | 21 | 20% | 1.76w | 1.2d | 0d |  | Sima | 80h | 17.6h |
| 24 | 1.5.2.2 | Connecting to caELMIR to return results (#8816) |  | 1.2w | 2007-12-26 A | 2008-01-02 A | 23 | 100% |  |  |  |  | Sima | 40h | 40h |

| ID | WBS | Task | Type | Duration | Start | Finish | Predecessors | Total slack | Free slack | Resources | Work |
| --- | --- | --- | --- | --- | --- | --- | --- | --- | --- | --- | --- |
| 25 | 1.5.3 | **Testing** |  | 77d? | 2007-10-22 | 2008-02-05 |  | 0d |  |  | 416h |
| 26 | 1.5.3.1 | Deploy iteration on DEV Server |  | 2d | 2008-01-03 | 2008-01-04 | 24 | 0d |  | Sima | 16h |
| 27 | 1.5.3.2 | Test on DEV tier |  | 1w | 2008-01-07 | 2008-01-11 | 26 | 0d |  | Ulli; Sima | 80h |
| 28 | 1.5.3.3 | **Transition Phase** |  | 77d? | 2007-10-22 | 2008-02-05 |  | 0d |  |  | 320h |
| 29 | 1.5.3.3.1 | **QA** |  | 10d | 2007-10-22 | 2007-11-02 | 5 | 67d |  | QA | 160h |
| 30 | 1.5.3.3.1.1 | Finalize Testplan |  | 1w | 2007-10-22 | 2007-10-26 | 5 | 67d | 0d | QA | 40h |
| 31 | 1.5.3.3.1.2 | Finalize Test Cases |  | 1w | 2007-10-29 | 2007-11-02 | 30 | 67d |  | QA | 40h |
| 32 | 1.5.3.3.2 | **Deploy** |  | 17d? | 2008-01-14 | 2008-02-05 |  | 0d |  |  | 160h |
| 33 | 1.5.3.3.2.1 | **QA Server Deployment** |  | 10d | 2008-01-14 | 2008-01-25 | 27 | 0d |  |  | 80h |
| 34 | 1.5.3.3.2.1.1 | QA Testing |  | 2w | 2008-01-14 | 2008-01-25 |  | 0d |  | QA | 80h |
| 35 | 1.5.3.3.2.2 | **Configuration and Change Management** |  | 1d? | 2008-01-28 | 2008-01-28 |  | 6d |  |  | 8h |
| 36 | 1.5.3.3.2.2.1 | Update gForge with application tar file |  | 1d? | 2008-01-28 | 2008-01-28 | 34 | 6d |  | Sima | 8h |
| 37 | 1.5.3.3.2.3 | **Staging Server Deployment** |  | 5d | 2008-01-28 | 2008-02-01 | 34 | 0d |  |  | 40h |
| 38 | 1.5.3.3.2.3.1 | Staging Testing |  | 1w | 2008-01-28 | 2008-02-01 |  | 0d |  | Ulli | 40h |
| 39 | 1.5.3.3.2.4 | **Production Server Deployment** |  | 2d | 2008-02-04 | 2008-02-05 | 38 | 0d |  | Sima | 32h |
| 40 | 1.5.3.3.2.4.1 | Production Verification |  | 2d | 2008-02-04 | 2008-02-05 |  | 0d |  | Ulli | 16h |
| 41 | 1.5.3.4 | caMOD 2.4 - Closeout | milestone | 0d | 2008-02-05 | 2008-02-05 | 40 | 0d |  |  |  |
